# Quantum 2012 Management v0.2 08242012

Schedule from MS Project, 2011-03-01 to 2012-09-14, status date 2012-06-02, 2 hours a day, costs in $, A marks actual dates.

## Calendars

- Standard: Mon-Fri 08:00-12:00, 13:00-17:00; Sat-Sun off. Exceptions (off unless hours are given): 2012-06-02 08:00-12:00, 13:00-17:00.

## Resources

| Resource | Group | Rate |
| --- | --- | --- |
| Quan Nguyen | PM | 10 |
| Dung Vu | TA | 10 |
| Tuan Nguyen | DEV | 3 |
| Dat Nguyen | DEV | 1 |
| Huy | DEV | 1 |
| Duy Anh | DEV | 1 |
| Thuy | DEV | 1 |
| Duy |  | 1 |

## Schedule

| ID | WBS | Task | Type | Duration | Start | Finish | Predecessors | Complete | Remaining | Total slack | Free slack | Constraint | Resources | Work | Actual work | Cost | Actual cost |
| --- | --- | --- | --- | --- | --- | --- | --- | --- | --- | --- | --- | --- | --- | --- | --- | --- | --- |
| 1 | 1 | **Quantum Desktop Version** |  | 1560d? | 2011-03-01 A | 2012-08-24 |  | 48% | 818.54d? | 60d |  |  |  | 498h | 217.2h | 2,690 | 1,660.8 |
| 3 | 1.1 | **Quantum version 2.0** |  | 62d? | 2012-03-01 A | 2012-03-22 |  | 61% | 24d? | 510d |  |  |  | 159.2h | 87.2h | 1,552.8 | 832.8 |
| 4 | 1.1.1 | Market Summary |  | 28d? | 2012-03-01 A | 2012-03-09 A |  | 100% |  |  |  | finish no earlier than 2012-03-09 | Dung Vu; Tuan Nguyen [10%]; Quan Nguyen [10%] | 67.2h | 67.2h | 632.8 | 632.8 |
| 5 | 1.1.2 | Gán Strategy cho từng Stocks - liên quan đến Alerts |  | 4d? | 2012-03-12 | 2012-03-12 | 4 |  |  | 520d | 0d |  | Quan Nguyen [50%]; Dung Vu | 12h |  | 120 |  |
| 6 | 1.1.3 | Custom Alerts |  | 20d? | 2012-03-13 | 2012-03-19 | 5 |  |  | 520d |  |  | Dung Vu; Quan Nguyen [50%] | 60h |  | 600 |  |
| 7 | 1.1.4 | Vẽ Chart Technical |  | 10d? | 2012-03-20 A | 2012-03-22 A | 6 | 100% |  |  |  |  | Dung Vu | 20h | 20h | 200 | 200 |
| 8 | 1.2 | **Reporting & Email Module** |  | 1364d? | 2011-03-01 | 2012-06-18 |  |  |  | 256d |  |  |  | 72.8h |  | 165.2 |  |
| 9 | 1.2.1 | **Analysis** |  | 1d? | 2011-03-01 | 2011-03-01 |  |  |  | 1619d |  |  | Dung Vu [20%]; Quan Nguyen [10%]; Thuy; Duy Anh; Tuan Nguyen [30%] | 5.2h |  | 11.8 |  |
| 10 | 1.2.1.1 | Phân tích report thị trường |  | 1d? | 2011-03-01 | 2011-03-01 |  |  |  | 1619d |  |  |  |  |  |  |  |
| 11 | 1.2.1.2 | Phân tích report kỹ thuật |  | 1d? | 2011-03-01 | 2011-03-01 |  |  |  | 1619d |  |  |  |  |  |  |  |
| 12 | 1.2.1.3 | Tạo các hàm để viết report |  | 1d? | 2011-03-01 | 2011-03-01 |  |  |  | 1619d |  |  |  |  |  |  |  |
| 13 | 1.2.1.4 | Mapping hàm report và hàm Webservices |  | 1d? | 2011-03-01 | 2011-03-01 |  |  |  | 1619d |  |  |  |  |  |  |  |
| 14 | 1.2.2 | **Design** |  | 1d? | 2011-03-01 | 2011-03-01 |  |  |  | 1619d |  |  | Thuy; Duy Anh; Tuan Nguyen [30%]; Dung Vu [20%]; Quan Nguyen [10%] | 5.2h |  | 11.8 |  |
| 15 | 1.2.2.1 | Thiết kế lớp xử lý Data |  | 1d? | 2011-03-01 | 2011-03-01 |  |  |  | 1619d |  |  |  |  |  |  |  |
| 16 | 1.2.3 | Implementation |  | 4d? | 2012-06-18 | 2012-06-18 |  |  |  | 256d |  | start no earlier than 2012-06-18 | Thuy; Duy Anh; Tuan Nguyen [30%]; Dung Vu [20%]; Quan Nguyen [10%] | 20.8h |  | 47.2 |  |
| 18 | 1.2.4 | Testing |  | 4d? | 2012-06-18 | 2012-06-18 |  |  |  | 256d |  | start no earlier than 2012-06-18 | Thuy; Duy Anh; Tuan Nguyen [30%]; Dung Vu [20%]; Quan Nguyen [10%] | 20.8h |  | 47.2 |  |
| 19 | 1.2.5 | Integration |  | 4d? | 2012-06-18 | 2012-06-18 |  |  |  | 256d |  | start no earlier than 2012-06-18 | Thuy; Duy Anh; Tuan Nguyen [30%]; Dung Vu [20%]; Quan Nguyen [10%] | 20.8h |  | 47.2 |  |
| 20 | 1.3 | **Data Module** |  | 1560d? | 2011-03-01 A | 2012-08-24 |  | 48% | 817.14d? | 60d |  |  |  | 168h | 84h | 240 | 160 |
| 21 | 1.3.1 | Tổng kết về các Website | milestone | 0d? | 2012-08-24 A | 2012-08-24 A |  | 100% |  |  |  | start no earlier than 2012-08-24 | Huy; Dat Nguyen; Quan Nguyen [10%]; Tuan Nguyen [10%]; Dung Vu [10%] |  |  |  |  |
| 22 | 1.3.2 | Đọc dữ liệu từ SSI |  | 40d? | 2012-08-10 A | 2012-08-24 |  | 50% | 20d? | 60d |  | finish no earlier than 2012-08-24 | Dat Nguyen; Huy; Dung Vu [10%] | 168h | 84h | 240 | 160 |
| 23 | 1.3.3 | Tích hợp vào hệ thống |  | 1d? | 2011-03-01 | 2011-03-01 |  |  |  | 1619d |  |  |  |  |  |  |  |
| 24 | 1.3.4 | Document tổng hợp |  | 1d? | 2011-03-01 | 2011-03-01 |  |  |  | 1619d |  |  |  |  |  |  |  |
| 25 | 1.4 | **Bug fix** |  | 248d? | 2012-06-01 A | 2012-08-24 |  | 52% | 118.9d? | 60d |  |  |  | 86h | 46h | 668 | 668 |
| 26 | 1.4.1 | XP/2003 installation |  | 28d? | 2012-06-01 A | 2012-06-08 |  | 29% | 20d? | 280d |  | start no earlier than 2012-06-01 | Dung Vu | 56h | 16h | 560 | 560 |
| 27 | 1.4.2 | Data Correction for VNIndex |  | 13.71d? | 2012-06-12 A | 2012-06-15 A |  | 100% |  |  |  | finish no earlier than 2012-06-15 | Dung Vu [9.4%]; Tuan Nguyen | 30h | 30h | 108 | 108 |
| 28 | 1.4.3 | Indicators và Chart | milestone | 0d? | 2012-08-24 | 2012-08-24 |  |  |  | 60d |  | start no earlier than 2012-08-24 | Tuan Nguyen; Dung Vu |  |  |  |  |

Notes:
- 1: Proorities Orientation / - Định hướng phát triển các hŕm quan trọng / - Phát triển trước các hŕm có ảnh hưởng đến độ cảm nhận của khách hŕng / - Sửa các lỗi quan trong
- 26: sẽ để sau

| ID | WBS | Task | Type | Duration | Start | Finish | Predecessors | Complete | Remaining | Total slack | Constraint | Deadline | Resources | Work | Actual work | Cost | Actual cost |
| --- | --- | --- | --- | --- | --- | --- | --- | --- | --- | --- | --- | --- | --- | --- | --- | --- | --- |
| 30 | 1.5 | **Non Functional Requirement** |  | 1332d? | 2011-03-01 | 2012-06-06 |  |  |  | 288d |  |  |  | 12h |  | 64 |  |
| 31 | 1.5.1 | Webservices Optimisation |  | 4d? | 2012-06-06 | 2012-06-06 |  |  |  | 288d | start no earlier than 2012-06-06 |  | Dung Vu [50%]; Tuan Nguyen | 12h |  | 64 |  |
| 32 | 1.5.2 | Database Optimisation |  | 1d? | 2011-03-01 | 2011-03-01 |  |  |  | 1619d |  |  |  |  |  |  |  |
| 34 | 2 | **Documentation** |  | 1564d? | 2011-03-01 A | 2012-08-27 |  | 33% | 1048.8d? | 56d |  |  |  | 506h | 168h | 4,174.5 | 1,980 |
| 35 | 2.1 | Requirement for Quantum Desktop v1.4 |  | 64d | 2012-08-06 | 2012-08-27 |  |  |  | 56d | start no earlier than 2012-08-03 |  | Quan Nguyen; Dung Vu [50%]; Tuan Nguyen [50%] | 256h |  | 2,112 |  |
| 36 | 2.2 | Requirement for Quantum Admin v0.4 |  | 0.5d? | 2011-03-01 | 2011-03-01 |  |  |  | 1619.5d |  |  | Quan Nguyen; Dung Vu [50%]; Tuan Nguyen [50%] | 2h |  | 16.5 |  |
| 37 | 2.3 | Quantum Database |  | 1d? | 2011-03-01 | 2011-03-01 |  |  |  | 1619d |  |  | Quan Nguyen; Dung Vu [50%]; Tuan Nguyen [50%] | 4h |  | 33 |  |
| 38 | 2.4 | Quantum Architecture |  | 1d? | 2011-03-01 | 2011-03-01 |  |  |  | 1619d |  |  | Quan Nguyen; Dung Vu [50%]; Tuan Nguyen [50%] | 4h |  | 33 |  |
| 39 | 2.5 | Quantum User Guide Tieng Viet |  | 40h | 2012-08-20 A | 2012-08-25 |  | 10% | 36h | 0d | must finish on 2012-08-25 | 2012-08-27 | Quan Nguyen; Dung Vu [50%]; Tuan Nguyen [50%] | 80h | 8h | 660 | 660 |
| 40 | 2.6 | Quantum User Guide English 1.4 |  | 80h | 2012-08-03 A | 2012-08-17 A |  | 100% |  |  | finish no earlier than 2012-08-24 |  | Quan Nguyen; Dung Vu [50%]; Tuan Nguyen [50%] | 160h | 160h | 1,320 | 1,320 |
| 42 | 3 | **Quantum Web** |  | 480d? | 2012-04-03 A | 2012-09-14 |  | 8% | 444d? | 0d |  |  |  | 1536h | 115.2h | 5,376 | 4,488 |
| 43 | 3.1 | Web design by inside team |  | 480d? | 2012-04-03 A | 2012-09-14 |  | 8% | 444d? | 0d | finish no earlier than 2012-09-14 |  | Duy; Dung Vu [20%]; Tuan Nguyen [20%]; Quan Nguyen [20%] | 1536h | 115.2h | 5,376 | 4,488 |
| 44 | 3.2 | Web approved by PM | milestone | 0d | 2012-09-14 | 2012-09-14 | 43 |  |  | 0d | start no earlier than 2012-06-06 |  | Dung Vu; Quan Nguyen; Tuan Nguyen |  |  |  |  |
| 46 | 4 | **Quantum Mobile (iOS, Android)** |  | 4d? | 2012-09-03 | 2012-09-03 |  |  |  | 36d |  |  |  |  |  |  |  |
| 47 | 4.1 | Quantum Mobile draft design |  | 4d? | 2012-09-03 | 2012-09-03 |  |  |  | 36d | start no earlier than 2012-09-03 |  |  |  |  |  |  |
| 48 | 4.2 | I phone approved by PM |  | 4d? | 2012-09-03 | 2012-09-03 |  |  |  | 36d | start no earlier than 2012-09-03 |  |  |  |  |  |  |

Notes:
- 40: Quantum 2012 User Guide v1.4 23082012
